# NASA EVA Gamify

Schedule from MS Project, 2018-01-29 to 2018-04-22, 24 hours a day, A marks actual dates.

## Calendars

- 24 Hours: Mon-Sun 00:00-24:00.

## Resources

| Resource |
| --- |
| Project Director |
| Project Manager |
| Acceptor |
| Application Architect |
| Technical Architect |
| Quality Assurance Manager |
| Contracts Manager |
| Team Leader |
| Vicki Guadagno |
| Mike |
| Jakki |
| Kevin |
| Vicki |
| Okey |
| ike |

## Schedule

| ID | WBS | Task | Type | Duration | Start | Finish | Predecessors | Complete | Remaining | Total slack | Constraint | Resources | Work | Actual work | PMBOK Knowledge Area | Text8 | Text7 | Deliverables |
| --- | --- | --- | --- | --- | --- | --- | --- | --- | --- | --- | --- | --- | --- | --- | --- | --- | --- | --- |
| 1 | 1 | **Milestone 1** |  | 20.38d | 2018-01-29 A | 2018-02-18 |  | 99% | 0.12d | 0d |  |  | 5346h | 5337h |  |  |  |  |
| 2 | 1.1 | **Communications Plan** |  | 4.38d | 2018-01-29 A | 2018-02-02 A |  | 100% |  |  |  |  | 525h | 525h | Project Communications Management | {876CD06D-940E-43EF-9802-509E60EAB5CE} |  |  |
| 3 | 1.1.1 | Plan Project Communications | manual | 4.38d | 2018-01-29 A | 2018-02-02 A |  | 100% |  |  | start no earlier than 2018-01-29 | Jakki; Mike; Kevin; Vicki; Okey | 525h | 525h | Project Communications Management | {EDAC4ED9-D4A4-41E9-8663-0C10D94137D2} | Communications Management Plan |  |
| 4 | 1.2 | **Identified Stakeholders** |  | 0.38d | 2018-02-11 A | 2018-02-11 A |  | 100% |  |  |  |  | 18h | 18h | Project Stakeholder Management |  |  |  |
| 5 | 1.2.1 | Document Project Stakeholders |  | 0.38d | 2018-02-11 A | 2018-02-11 A |  | 100% |  |  | start no earlier than 2018-02-11 | Vicki | 9h | 9h | Project Stakeholder Management |  | List of Stakeholders | List of Stakeholders |
| 6 | 1.2.2 | Conduct Stakeholder Analysis |  | 0.38d | 2018-02-11 A | 2018-02-11 A |  | 100% |  |  | finish no earlier than 2018-02-11 | Vicki | 9h | 9h | Project Stakeholder Management |  | Stakeholder Analysis Grids | Stakeholder Analysis Grids |
| 7 | 1.3 | **Project Scope Statement** |  | 10.38d | 2018-02-08 A | 2018-02-18 A |  | 100% |  |  |  |  | 1851h | 1851h | Project Scope Management | {95DE3CDA-9499-4744-AD39-564285641A52} |  |  |
| 8 | 1.3.1 | Define Project Scope |  | 7.38d | 2018-02-08 A | 2018-02-15 A |  | 100% |  |  | finish no earlier than 2018-02-15 | Mike; Jakki; Kevin; Vicki; Okey | 885h | 885h | Project Scope Management | {7D578EAF-E191-4444-AB3A-7F8B89F05489} | Definition of Project Scope | Definition of Project Scope |
| 9 | 1.3.2 | Identify Project Exclusions |  | 7.38d | 2018-02-08 A | 2018-02-15 A |  | 100% |  |  | finish no earlier than 2018-02-15 | Mike; Jakki; Kevin; Vicki; Okey | 885h | 885h | Project Scope Management |  | Project Exclusions | Project Exclusions |
| 10 | 1.3.3 | Document Assumptions and Constraints |  | 3.38d | 2018-02-15 A | 2018-02-18 A |  | 100% |  |  | finish no earlier than 2018-02-18 | Vicki | 81h | 81h | Project Scope Management | {EF914BD9-AA5A-4684-BC54-11DDA9EFF8B6} | List of Assumptions | List of Assumptions |
| 11 | 1.3.4 | Document Project Scope | milestone | 0d | 2018-02-18 A | 2018-02-18 A | 8, 9, 10 | 100% |  |  | finish no earlier than 2018-02-18 | Vicki |  |  | Project Scope Management |  | Project Scope | Project Scope |
| 12 | 1.4 | **Project Charter** |  | 0.38d | 2018-02-11 A | 2018-02-11 A |  | 100% |  |  |  |  | 9h | 9h | Project Integration Management | {D09FBBEC-4AE3-4627-AF63-B09962B16A03} |  |  |
| 13 | 1.4.1 | Document Goals, Objectives, Strategies and Plans |  | 0.38d | 2018-02-11 A | 2018-02-11 A |  | 100% |  |  | finish no earlier than 2018-02-11 | Vicki | 9h | 9h | Project Integration Management | {151ACF6D-1D6A-4204-A626-C3777486B053} | Project Charter | Project Charter |
| 14 | 1.5 | **Project Environment** |  | 20.38d | 2018-01-29 A | 2018-02-18 A |  | 100% |  |  |  |  | 2934h | 2934h | Project Integration Management | {2FAC9CBC-F47B-4EDC-9C65-6D8FCADD1824} |  |  |
| 15 | 1.5.1 | Prepare Individual Environments (IIS, PHP, MySQL/MariaDB, MediaWiki) | manual | 20.38d | 2018-01-29 A | 2018-02-18 A |  | 100% |  |  |  | Jakki; Mike; Kevin; Vicki; Okey | 2445h | 2445h | Project Integration Management | {53CB9D49-853C-4DF7-937F-2EEBA2112926} | Physical Project Environment |  |
| 16 | 1.5.2 | Set Up CentOS7 environment |  | 20.38d | 2018-01-29 A | 2018-02-18 A |  | 100% |  |  | finish no earlier than 2018-02-18 | Kevin | 489h | 489h | Project Integration Management | {98F8B241-19C7-4119-9A9C-BB7C740C0FD6} | Project Standards and Procedures |  |
| 17 | 1.6 | Submit Project Charter, Stakeholder Analysis, Project Schedule, Project Management Plan | manual | 0.38d | 2018-02-18 | 2018-02-18 |  |  |  |  |  | Mike | 9h |  |  |  |  |  |
| 18 | 2 | **Milestone 2** |  | 34d | 2018-02-05 | 2018-03-11 |  |  |  | 13.62d |  |  | 6684h |  | Project Integration Management | {AF0DA97D-C86A-4941-91B4-60AB63A140C0} |  |  |
| 19 | 2.1 | Set Up GitHub | manual | 6.38d | 2018-02-19 | 2018-02-25 |  |  |  |  |  | Jakki | 153h |  |  |  |  |  |
| 20 | 2.2 | **Define Templates** |  | 6.38d | 2018-02-19 | 2018-02-25 |  |  |  | 0d |  |  | 918h |  |  |  |  |  |
| 21 | 2.2.1 | Requirements Document Template | manual | 6.38d | 2018-02-19 | 2018-02-25 |  |  |  |  |  | Vicki | 153h |  |  |  |  |  |
| 22 | 2.2.2 | Design Document Template | manual | 6.38d | 2018-02-19 | 2018-02-25 |  |  |  |  |  | Vicki | 153h |  |  |  |  |  |
| 23 | 2.2.3 | Database Design Template | manual | 6.38d | 2018-02-19 | 2018-02-25 |  |  |  |  |  | Vicki | 153h |  |  |  |  |  |
| 24 | 2.2.4 | Test Script Template | manual | 6.38d | 2018-02-19 | 2018-02-25 |  |  |  |  |  | Vicki | 153h |  |  |  |  |  |
| 25 | 2.2.5 | Test Report Template | manual | 6.38d | 2018-02-19 | 2018-02-25 |  |  |  |  |  | Vicki | 153h |  |  |  |  |  |
| 26 | 2.2.6 | Handover Document Template | manual | 6.38d | 2018-02-19 | 2018-02-25 |  |  |  |  |  | Vicki | 153h |  |  |  |  |  |

| ID | WBS | Task | Type | Duration | Start | Finish | Predecessors | Total slack | Free slack | Constraint | Resources | Work | PMBOK Knowledge Area | Text8 | Deliverables | Text7 |
| --- | --- | --- | --- | --- | --- | --- | --- | --- | --- | --- | --- | --- | --- | --- | --- | --- |
| 27 | 2.3 | **Requirements Document** |  | 29.75d | 2018-02-05 | 2018-03-07 |  | 46.25d |  |  |  | 2403h | Project Scope Management | {806C1411-175A-43FA-9F9A-5F11107A2A03} |  |  |
| 28 | 2.3.1 | Collect Project Requirements |  | 17d | 2018-02-05 | 2018-02-22 |  | 46.25d | 0d | finish no earlier than 2018-02-22 | Mike; Jakki; Kevin; Vicki; Okey | 2040h | Project Scope Management | {D072F9A2-5434-4845-9258-DB2700A7E5E8} | Requirements Worksheets | Requirements worksheets |
| 29 | 2.3.2 | Develop Requirements Traceability Matrix |  | 2.38d | 2018-02-22 | 2018-02-25 | 28 | 56.62d |  | finish no earlier than 2018-02-18 | Vicki | 57h | Project Scope Management |  | Requirements Traceability Matrix | Requirements Traceability Matrix |
| 30 | 2.3.3 | Produce Requirements Document |  | 2.38d | 2018-02-22 | 2018-02-25 | 28 | 46.25d | 0d | finish no earlier than 2018-02-18 | Vicki | 57h | Project Scope Management | {EA95361D-14D5-41DB-9FAE-49AC741D4C1F} | Project Requirements Document | Project Requirements Document |
| 31 | 2.3.4 | Get Approval from Customer |  | 10.38d | 2018-02-25 | 2018-03-07 | 30 | 46.25d |  | start no earlier than 2018-02-19 | Mike | 249h | Project Scope Management | {EA95361D-14D5-41DB-9FAE-49AC741D4C1F} | Business Approval | Project Requirements Document |
| 32 | 2.4 | **User Profile** |  | 9.38d | 2018-02-23 | 2018-03-04 |  | 49d |  |  |  | 822h | Project Quality Management | {2154DB83-EEDD-48FB-A6ED-3E300450A22F} |  |  |
| 33 | 2.4.1 | Design |  | 6.38d | 2018-02-23 | 2018-03-01 |  | 49.62d | 0.62d | start no earlier than 2018-02-23 | Mike; Jakki; Kevin; Vicki; Okey | 765h | Project Quality Management | {EC1F03E5-B62E-48B9-BCD1-E469A76634D9} |  | Walk-through/Review Reports, Action Items |
| 34 | 2.4.2 | Document |  | 2.38d | 2018-03-02 | 2018-03-04 | 33 | 49d |  | finish no earlier than 2018-03-04 | Vicki | 57h | Project Quality Management | {EC1F03E5-B62E-48B9-BCD1-E469A76634D9} | User Profile Design | Walk-through/Review Reports, Action Items |
| 35 | 2.5 | **Game** |  | 9.38d | 2018-02-23 | 2018-03-04 |  | 49d |  |  |  | 822h | Project Quality Management | {2154DB83-EEDD-48FB-A6ED-3E300450A22F} |  |  |
| 36 | 2.5.1 | Design |  | 6.38d | 2018-02-23 | 2018-03-01 |  | 52d |  | finish no earlier than 2018-03-01 | Kevin; Jakki; Mike; Vicki; Okey | 765h | Project Quality Management | {EC1F03E5-B62E-48B9-BCD1-E469A76634D9} |  | Walk-through/Review Reports, Action Items |
| 37 | 2.5.2 | Document |  | 2.38d | 2018-03-02 | 2018-03-04 | 33 | 49d |  | finish no earlier than 2018-03-04 | Vicki | 57h | Project Quality Management | {EC1F03E5-B62E-48B9-BCD1-E469A76634D9} | Game Design | Walk-through/Review Reports, Action Items |
| 38 | 2.6 | **User Interface** |  | 8.38d | 2018-03-02 | 2018-03-10 |  | 42.25d | 0.62d |  |  | 774h | Project Quality Management | {2154DB83-EEDD-48FB-A6ED-3E300450A22F} |  |  |
| 39 | 2.6.1 | Design |  | 6.38d | 2018-03-02 | 2018-03-08 |  | 44.25d |  | start no earlier than 2018-03-02 | Jakki; Mike; Kevin; Vicki; Okey | 765h | Project Quality Management | {EC1F03E5-B62E-48B9-BCD1-E469A76634D9} |  | Walk-through/Review Reports, Action Items |
| 40 | 2.6.2 | Document |  | 0.38d | 2018-03-10 | 2018-03-10 | 33 | 42.25d |  | finish no earlier than 2018-03-10 | Vicki | 9h | Project Quality Management | {EC1F03E5-B62E-48B9-BCD1-E469A76634D9} | User Interface Design | Walk-through/Review Reports, Action Items |
| 41 | 2.7 | **Database** |  | 8.38d | 2018-03-02 | 2018-03-10 |  | 42.25d | 0.62d |  |  | 774h | Project Quality Management | {2154DB83-EEDD-48FB-A6ED-3E300450A22F} |  |  |
| 42 | 2.7.1 | Design |  | 6.38d | 2018-03-02 | 2018-03-08 |  | 44.25d |  | start no earlier than 2018-03-02 | Jakki; Mike; Kevin; Vicki; Okey | 765h | Project Quality Management | {EC1F03E5-B62E-48B9-BCD1-E469A76634D9} |  | Walk-through/Review Reports, Action Items |
| 43 | 2.7.2 | Document |  | 0.38d | 2018-03-10 | 2018-03-10 | 33 | 42.25d |  | finish no earlier than 2018-03-10 | Jakki | 9h | Project Quality Management | {EC1F03E5-B62E-48B9-BCD1-E469A76634D9} | Database Design | Walk-through/Review Reports, Action Items |
| 44 | 2.8 | Verify all documentation is in GitHub |  | 0.38d | 2018-03-11 | 2018-03-11 | 41, 38 | 41.62d | 0d | start no earlier than 2018-03-11 | Vicki | 9h | Project Integration Management | {EA419DF1-FDD9-4BE1-9C15-AD4966E400AA} |  | Security Administration |
| 45 | 2.9 | Submit Requirements Document, User Profile Design, Game Design, User Interface Design, Database Design | manual | 0.38d | 2018-03-11 | 2018-03-11 | 44 |  |  |  | Mike | 9h |  |  |  |  |
| 46 | 3 | **Milestone 3** |  | 23.38d | 2018-03-09 | 2018-04-01 |  | 14d |  |  |  | 1953h | Project Integration Management | {AF0DA97D-C86A-4941-91B4-60AB63A140C0} |  |  |
| 47 | 3.1 | **Database** |  | 20.38d | 2018-03-09 | 2018-03-29 |  | 14d | 1.62d |  |  | 612h | Project Quality Management | {2154DB83-EEDD-48FB-A6ED-3E300450A22F} |  |  |
| 48 | 3.1.1 | Develop |  | 6.38d | 2018-03-09 | 2018-03-15 |  | 34.06d | 3.81d | finish no earlier than 2018-03-15 | Jakki | 153h | Project Quality Management | {EC1F03E5-B62E-48B9-BCD1-E469A76634D9} | Database Script | Walk-through/Review Reports, Action Items |
| 49 | 3.1.2 | Test Script |  | 3.19d | 2018-03-19 | 2018-03-22 | 48 | 30.25d |  | finish no earlier than 2018-03-22 | Okey; Vicki | 153h | Project Quality Management | {EC1F03E5-B62E-48B9-BCD1-E469A76634D9} | Test Script | Walk-through/Review Reports, Action Items |
| 50 | 3.1.3 | Update Design Document | manual | 6.38d | 2018-03-23 | 2018-03-29 |  |  |  |  | Jakki | 153h |  |  | Database Design |  |
| 51 | 3.1.4 | Document |  | 6.38d | 2018-03-22 | 2018-03-29 | 53 | 23.88d |  | finish no earlier than 2018-03-22 | Okey | 153h | Project Quality Management | {EC1F03E5-B62E-48B9-BCD1-E469A76634D9} | Test Report | Walk-through/Review Reports, Action Items |

| ID | WBS | Task | Type | Duration | Start | Finish | Predecessors | Total slack | Free slack | Constraint | Resources | Work | PMBOK Knowledge Area | Text8 | Deliverables | Text7 |
| --- | --- | --- | --- | --- | --- | --- | --- | --- | --- | --- | --- | --- | --- | --- | --- | --- |
| 52 | 3.2 | **User Profile** |  | 15.69d | 2018-03-16 | 2018-03-31 |  | 14.31d |  |  |  | 669h | Project Quality Management | {2154DB83-EEDD-48FB-A6ED-3E300450A22F} |  |  |
| 53 | 3.2.1 | Code |  | 6.69d | 2018-03-16 | 2018-03-22 |  | 16.5d | 0d | finish no earlier than 2018-03-22 | Mike; Jakki | 321h | Project Quality Management | {EC1F03E5-B62E-48B9-BCD1-E469A76634D9} | Code | Walk-through/Review Reports, Action Items |
| 54 | 3.2.2 | Test |  | 6.38d | 2018-03-23 | 2018-03-29 | 53 | 24d |  | start no earlier than 2018-03-23 | Okey; Vicki | 306h | Project Quality Management | {EC1F03E5-B62E-48B9-BCD1-E469A76634D9} | Test Script | Walk-through/Review Reports, Action Items |
| 55 | 3.2.3 | Update Design Document | manual | 1.38d | 2018-03-30 | 2018-03-31 |  |  |  |  | Vicki | 33h |  |  | User Profile Design |  |
| 56 | 3.2.4 | Document |  | 0.38d | 2018-03-31 | 2018-03-31 | 53 | 22d |  | finish no earlier than 2018-03-31 | Okey | 9h | Project Quality Management | {EC1F03E5-B62E-48B9-BCD1-E469A76634D9} | Test Report | Walk-through/Review Reports, Action Items |
| 57 | 3.3 | **Game** |  | 15.38d | 2018-03-16 | 2018-03-31 |  | 14d |  |  |  | 654h | Project Quality Management | {2154DB83-EEDD-48FB-A6ED-3E300450A22F} |  |  |
| 58 | 3.3.1 | Code |  | 6.38d | 2018-03-16 | 2018-03-22 |  | 31d |  | finish no earlier than 2018-03-22 | Kevin; Vicki | 306h | Project Quality Management | {EC1F03E5-B62E-48B9-BCD1-E469A76634D9} | Code | Walk-through/Review Reports, Action Items |
| 59 | 3.3.2 | Test |  | 6.38d | 2018-03-23 | 2018-03-29 |  | 24d |  | finish no earlier than 2018-03-29 | Okey; Jakki | 306h | Project Quality Management | {EC1F03E5-B62E-48B9-BCD1-E469A76634D9} | Test Script | Walk-through/Review Reports, Action Items |
| 60 | 3.3.3 | Update Design Document | manual | 1.38d | 2018-03-30 | 2018-03-31 |  |  |  |  | Vicki | 33h |  |  | Game Design |  |
| 61 | 3.3.4 | Document |  | 0.38d | 2018-03-31 | 2018-03-31 | 53 | 22d |  | finish no earlier than 2018-03-31 | Okey | 9h | Project Quality Management | {EC1F03E5-B62E-48B9-BCD1-E469A76634D9} | Test Report | Walk-through/Review Reports, Action Items |
| 62 | 3.4 | Verify all documentation is in GitHub |  | 0.38d | 2018-03-31 | 2018-03-31 | 47 | 21.62d | 0.62d | start no earlier than 2018-03-31 | Vicki | 9h | Project Integration Management | {EA419DF1-FDD9-4BE1-9C15-AD4966E400AA} |  | Security Administration |
| 63 | 3.5 | Submit Database Script, User Profile Code, Game Code, Testing Reports for Database, Database Documentation, User Profile Documentation, Game Documentation | manual | 0.38d | 2018-04-01 | 2018-04-01 | 62 |  |  |  | Mike | 9h |  |  |  |  |
| 64 | 4 | **Milestone 4** |  | 20.38d | 2018-04-02 | 2018-04-22 |  |  |  |  |  | 1557h | Project Quality Management | {2154DB83-EEDD-48FB-A6ED-3E300450A22F} |  |  |
| 65 | 4.1 | **Handover Document** |  | 20.12d | 2018-04-02 | 2018-04-22 |  | 0d |  |  |  | 1557h | Project Quality Management | {2154DB83-EEDD-48FB-A6ED-3E300450A22F} |  |  |
| 66 | 4.1.1 | Define |  | 3.38d | 2018-04-02 | 2018-04-05 |  | 2.5d | 0.62d | finish no earlier than 2018-04-05 | Kevin; Vicki; Jakki; Mike; Okey | 405h | Project Quality Management | {EC1F03E5-B62E-48B9-BCD1-E469A76634D9} |  | Walk-through/Review Reports, Action Items |
| 67 | 4.1.2 | Document |  | 5.38d | 2018-04-06 | 2018-04-11 | 53, 66 | 1.88d | 0.62d | finish no earlier than 2018-04-11 | Vicki | 129h | Project Quality Management | {EC1F03E5-B62E-48B9-BCD1-E469A76634D9} |  | Walk-through/Review Reports, Action Items |
| 68 | 4.1.3 | Review Document |  | 8.38d | 2018-04-12 | 2018-04-20 | 53, 67 | 1.25d | 0.62d | finish no earlier than 2018-04-20 | Vicki; Kevin; Jakki; Mike; Okey | 1005h | Project Quality Management | {EC1F03E5-B62E-48B9-BCD1-E469A76634D9} |  | Walk-through/Review Reports, Action Items |
| 69 | 4.1.4 | Final Edits |  | 0.38d | 2018-04-21 | 2018-04-21 | 53, 68 | 0.62d | 0d | start no earlier than 2018-04-21 | Vicki | 9h | Project Quality Management | {EC1F03E5-B62E-48B9-BCD1-E469A76634D9} | Handover Document | Walk-through/Review Reports, Action Items |
| 70 | 4.1.5 | Verify all documentation is in GitHub | milestone | 0d | 2018-04-21 | 2018-04-21 | 47, 69 | 0.62d | 0.38d | finish no earlier than 2018-04-21 | Vicki |  | Project Integration Management | {EA419DF1-FDD9-4BE1-9C15-AD4966E400AA} |  | Security Administration |
| 71 | 4.1.6 | Submit Handover Documention | manual | 0.38d | 2018-04-22 | 2018-04-22 | 70 |  |  |  | Mike | 9h |  |  |  |  |
